# 项目管理

Schedule from MS Project, 2019-03-18 to 2019-06-14.

## Calendars

- 标准: Mon-Fri 08:00-12:00, 13:00-17:00; Sat-Sun off. Exceptions (off unless hours are given): 2019-04-20 08:00-12:00, 13:00-17:00.

## Resources

| Resource |
| --- |
| 项目经理 |
| 产品经理 |
| UI专家 |
| 需求专家 |
| 设计专家 |
| 质量专家 |
| 程序员1 |
| 程序员2 |
| 程序员3 |
| 测试员1 |
| 测试员2 |

## Schedule

| ID | WBS | Task | Type | Duration | Start | Finish | Predecessors | Total slack | Constraint | Resources | Work | 总成本 | 剩余 |
| --- | --- | --- | --- | --- | --- | --- | --- | --- | --- | --- | --- | --- | --- |
| 1 | 1 | **启动** |  | 3d | 2019-03-18 | 2019-03-20 |  |  |  |  | 96h | ¥80,050.00 | ¥80,050.00 |
| 2 | 1.1 | 任命项目经理 | manual | 1d | 2019-03-18 | 2019-03-18 |  |  | as late as possible |  |  | ¥4,800.00 | ¥4,800.00 |
| 3 | 1.2 | 组建核心团队 | manual | 1d | 2019-03-18 | 2019-03-18 |  |  | as late as possible | UI专家; 项目经理; 设计专家; 需求专家; 质量专家 | 40h | ¥1,800.00 | ¥1,800.00 |
| 4 | 1.3 | 干系人利益 | manual | 1d | 2019-03-18 | 2019-03-18 |  |  | as late as possible | 项目经理 | 8h | ¥400.00 | ¥400.00 |
| 5 | 1.4 | 制定项目章程 | manual | 1d | 2019-03-19 | 2019-03-19 | 2, 3, 4 |  | as late as possible | 项目经理 | 8h | ¥400.00 | ¥400.00 |
| 6 | 1.5 | 确定项目发起人 | manual | 1d | 2019-03-20 | 2019-03-20 | 5 |  | as late as possible | 项目经理 | 8h | ¥400.00 | ¥400.00 |
| 7 | 1.6 | 项目启动大会 | manual | 1d | 2019-03-20 | 2019-03-20 | 6 |  | as late as possible | 项目经理; 需求专家; UI专家; 设计专家; 质量专家 | 32h | ¥1,800.00 | ¥1,800.00 |
| 8 | 2 | **规划** |  | 33d | 2019-03-21 | 2019-05-03 |  |  |  |  | 488h | 24,160.00 | 24,160.00 |
| 9 | 2.1 | **规划范围** |  | 10d | 2019-03-21 | 2019-04-03 |  |  |  |  | 208h | ¥9,600.00 | ¥9,600.00 |
| 10 | 2.1.1 | 制定需求说明书 | manual | 10d | 2019-03-21 | 2019-04-03 | 7 |  |  | 需求专家 | 80h | ¥3,600.00 | ¥3,600.00 |
| 11 | 2.1.2 | 界面设计 | manual | 5d | 2019-03-21 | 2019-03-27 | 10 |  |  | UI专家 | 40h | ¥1,600.00 | ¥1,600.00 |
| 12 | 2.1.3 | 详细设计说明书 | manual | 5d | 2019-03-21 | 2019-03-27 | 10 |  |  | 设计专家 | 40h | ¥2,000.00 | ¥2,000.00 |
| 13 | 2.1.4 | 范围说明书 | manual | 3d | 2019-03-28 | 2019-04-01 | 10 |  |  | 项目经理 | 24h | ¥1,200.00 | ¥1,200.00 |
| 14 | 2.1.5 | 创建WBS | manual | 2d | 2019-04-01 | 2019-04-02 | 11, 12, 13 |  |  | 项目经理 | 16h | ¥800.00 | ¥800.00 |
| 15 | 2.1.6 | 形成范围基准 |  | 1d | 2019-04-03 | 2019-04-03 | 14 | 0d |  | 项目经理 | 8h | ¥400.00 | ¥400.00 |
| 16 | 2.2 | **规划时间** |  | 8d | 2019-04-03 | 2019-04-12 |  |  |  |  | 48h | ¥2,800.00 | ¥2,800.00 |
| 17 | 2.2.1 | 排列工作包顺序 | manual | 1d | 2019-04-04 | 2019-04-04 | 15 |  |  | 项目经理 | 8h | ¥400.00 | ¥400.00 |
| 18 | 2.2.2 | 估算资源 | manual | 1d | 2019-04-05 | 2019-04-05 | 17 |  |  | 项目经理 | 8h | ¥800.00 | ¥800.00 |
| 19 | 2.2.3 | 估算持续时间 | manual | 2d | 2019-04-06 | 2019-04-08 | 18 |  |  | 项目经理 | 16h | ¥800.00 | ¥800.00 |
| 20 | 2.2.4 | 制定进度计划 | manual | 1d | 2019-04-09 | 2019-04-09 | 19 |  |  | 项目经理 | 8h | ¥400.00 | ¥400.00 |
| 21 | 2.2.5 | 形成进度基准 | manual | 1d | 2019-04-10 | 2019-04-10 | 20 |  |  | 项目经理 | 8h | ¥400.00 | ¥400.00 |
| 22 | 2.3 | **规划成本** |  | 3d | 2019-04-12 | 2019-04-16 |  |  |  |  | 32h | ¥2,400.00 | ¥2,400.00 |
| 23 | 2.3.1 | 项目成本估算 | manual | 1d | 2019-04-12 | 2019-04-12 | 21 |  |  | 项目经理 | 8h | ¥1,200.00 | ¥1,200.00 |
| 24 | 2.3.2 | 项目预算 | manual | 1d | 2019-04-13 | 2019-04-13 | 23 |  |  | 项目经理 | 8h | ¥800.00 | ¥800.00 |
| 25 | 2.3.3 | 形成范围基准 | manual | 2d | 2019-04-15 | 2019-04-16 | 24 |  |  | 项目经理 | 16h | ¥400.00 | ¥400.00 |

| ID | WBS | Task | Type | Duration | Start | Finish | Predecessors | Total slack | Constraint | Resources | Work | 总成本 | 剩余 |
| --- | --- | --- | --- | --- | --- | --- | --- | --- | --- | --- | --- | --- | --- |
| 26 | 2.4 | **规划质量** |  | 7d | 2019-04-11 | 2019-04-19 |  |  |  |  | 72h | ¥2,560.00 | ¥2,560.00 |
| 27 | 2.4.1 | 制定测试计划 | manual | 2d | 2019-04-03 | 2019-04-04 | 15 |  |  | 质量专家 | 16h | ¥640.00 | ¥640.00 |
| 28 | 2.4.2 | 制定测试用例 | manual | 7d | 2019-04-11 | 2019-04-19 | 27 |  |  | 质量专家 | 56h | ¥1,920.00 | ¥1,920.00 |
| 29 | 2.5 | **规划人力资源** |  | 4d | 2019-04-19 | 2019-04-23 |  |  |  |  | 32h | ¥1,600.00 | ¥1,600.00 |
| 30 | 2.5.1 | 制定人力资源计划 | manual | 1d | 2019-04-19 | 2019-04-19 | 18 |  |  | 项目经理 | 8h | ¥800.00 | ¥800.00 |
| 31 | 2.5.2 | 制定人员配备管理计划 |  | 3d | 2019-04-20 | 2019-04-23 | 30 | 0d | start no earlier than 2019-04-20 | 项目经理 | 24h | ¥800.00 | ¥800.00 |
| 32 | 2.6 | **规划沟通** |  | 2d | 2019-04-24 | 2019-04-25 |  |  |  |  | 16h | ¥800.00 | ¥800.00 |
| 33 | 2.6.1 | 制定沟通管理计划 | manual | 2d | 2019-04-24 | 2019-04-25 | 31 |  |  | 项目经理 | 16h | ¥800.00 | ¥800.00 |
| 34 | 2.7 | **规划采购** |  | 6d | 2019-04-24 | 2019-05-01 |  |  |  |  | 48h | ¥2,800.00 | ¥2,800.00 |
| 35 | 2.7.1 | 自制外购分析 | manual | 2d | 2019-04-24 | 2019-04-25 | 18 |  |  | 项目经理 | 16h | ¥800.00 | ¥800.00 |
| 36 | 2.7.2 | 制定采购计划 | manual | 4d | 2019-04-26 | 2019-05-01 | 35 |  |  | 项目经理 | 32h | ¥2,000.00 | ¥2,000.00 |
| 37 | 2.8 | **规划风险** |  | 3d | 2019-05-01 | 2019-05-03 |  |  |  |  | 24h | ¥1,200.00 | ¥1,200.00 |
| 38 | 2.8.1 | 识别风险 | manual | 1d | 2019-05-01 | 2019-05-01 | 16, 22, 26, 29, 32, 34 |  |  | 项目经理 | 8h | ¥400.00 | ¥400.00 |
| 39 | 2.8.2 | 风险分析 | manual | 1d | 2019-05-02 | 2019-05-02 | 38 |  |  | 项目经理 | 8h | ¥400.00 | ¥400.00 |
| 40 | 2.8.3 | 制定风险登记册 | manual | 1d | 2019-05-03 | 2019-05-03 | 39 |  |  | 项目经理 | 8h | ¥400.00 | ¥400.00 |
| 41 | 2.9 | 规划整合 | manual | 1d | 2019-05-03 | 2019-05-03 | 40 |  |  | 项目经理 | 8h | ¥400.00 | ¥400.00 |
| 42 | 3 | **执行与监控** |  | 21d | 2019-05-03 | 2019-05-31 |  |  |  |  | 1088h | ¥44,130.00 | ¥44,130.00 |
| 43 | 3.1 | 组件项目团队 | manual | 3d | 2019-05-03 | 2019-05-07 | 8 |  |  | 测试员1; 测试员2; 项目经理; UI专家; 产品经理; 程序员1; 程序员2; 程序员3; 设计专家; 需求专家; 质量专家 | 264h | ¥5,160.00 | ¥5,160.00 |
| 44 | 3.2 | **项目执行** |  | 9d | 2019-05-03 | 2019-05-15 |  |  |  |  | 152h | ¥8,400.00 | ¥8,400.00 |
| 45 | 3.2.1 | **学生模块** |  | 9d | 2019-05-03 | 2019-05-15 |  |  |  |  | 72h | ¥5,040.00 | ¥5,040.00 |
| 46 | 3.2.1.1 | 注册登录 | manual | 3d | 2019-05-03 | 2019-05-07 | 43 |  |  | 程序员1 | 24h | ¥1008.00 | ¥1008.00 |
| 47 | 3.2.1.2 | 首页 | manual | 1d | 2019-05-08 | 2019-05-08 | 46 |  |  | 程序员1 | 8h | ¥1008.00 | ¥1008.00 |
| 48 | 3.2.1.3 | 签到 | manual | 1d | 2019-05-09 | 2019-05-09 | 47 |  |  | 程序员1 | 8h | ¥1008.00 | ¥1008.00 |
| 49 | 3.2.1.4 | 获取老师资源 | manual | 3d | 2019-05-10 | 2019-05-14 | 48 |  |  | 程序员1 | 24h | ¥1008.00 | ¥1008.00 |
| 50 | 3.2.1.5 | 课程分享 | manual | 1d | 2019-05-15 | 2019-05-15 | 49 |  |  | 程序员1 | 8h | ¥1008.00 | ¥1008.00 |

| ID | WBS | Task | Type | Duration | Start | Finish | Predecessors | Total slack | Constraint | Resources | Work | 总成本 | 剩余 |
| --- | --- | --- | --- | --- | --- | --- | --- | --- | --- | --- | --- | --- | --- |
| 51 | 3.2.2 | **老师模块** |  | 4d | 2019-05-03 | 2019-05-08 |  |  |  |  | 40h | ¥1,680.00 | ¥1,680.00 |
| 52 | 3.2.2.1 | 登录 | manual | 2d | 2019-05-03 | 2019-05-04 | 43 |  |  | 程序员2 | 16h | ¥560.00 | ¥560.00 |
| 53 | 3.2.2.2 | 选择班级 | manual | 2d | 2019-05-05 | 2019-05-06 | 50 |  |  | 程序员2 | 16h | ¥560.00 | ¥560.00 |
| 54 | 3.2.2.3 | 查看上课人数模块 | manual | 1d | 2019-05-08 | 2019-05-08 | 53 |  |  | 程序员2 | 8h | ¥560.00 | ¥560.00 |
| 55 | 3.2.3 | **管理员模块** |  | 6d | 2019-05-03 | 2019-05-10 |  |  |  |  | 40h | ¥1,680.00 | ¥1,680.00 |
| 56 | 3.2.3.1 | 学生老师审核 | manual | 2d | 2019-05-03 | 2019-05-04 | 54 |  |  | 程序员3 | 16h | ¥720.00 | ¥720.00 |
| 57 | 3.2.3.2 | 统计分析 |  | 2d | 2019-05-08 | 2019-05-09 | 56 | 0d |  | 程序员3 | 16h | ¥480.00 | ¥480.00 |
| 58 | 3.2.3.3 | 备份 |  | 1d | 2019-05-10 | 2019-05-10 | 57 | 0d |  | 程序员3 | 8h | ¥480.00 | ¥480.00 |
| 59 | 3.3 | **项目监控** |  | 3d | 2019-05-11 | 2019-05-14 |  |  |  |  | 136h | ¥7,210.00 | ¥7,210.00 |
| 60 | 3.3.1 | 各项指标监控 | manual | 1d | 2019-05-11 | 2019-05-11 | 43 |  |  | 测试员1; 项目经理 | 16h | 1,130.00 | 1,130.00 |
| 61 | 3.3.2 | 监控评审 | manual | 1d | 2019-05-12 | 2019-05-12 | 60 |  |  | 设计专家; 项目经理 | 16h | ¥1,480.00 | ¥1,480.00 |
| 62 | 3.3.3 | 变更评审 | manual | 1d | 2019-05-13 | 2019-05-13 | 61 |  |  | 设计专家; 项目经理 | 16h | ¥1,480.00 | ¥1,480.00 |
| 63 | 3.3.4 | 例会 | manual | 1d | 2019-05-14 | 2019-05-14 | 43 |  |  | UI专家; 测试员1; 测试员2; 产品经理; 程序员1; 程序员2; 程序员3; 设计专家; 项目经理; 需求专家; 质量专家 | 88h | ¥3,120.00 | ¥3,120.00 |
| 64 | 3.4 | **管理干系人** |  | 3d | 2019-05-14 | 2019-05-16 |  |  |  |  | 24h | ¥1,200.00 | ¥1,200.00 |
| 65 | 3.4.1 | 发布项目信息 | manual | 1d | 2019-05-14 | 2019-05-14 | 43 |  |  | 项目经理 | 8h | ¥400.00 | ¥400.00 |
| 66 | 3.4.2 | 报告监控指标 | manual | 1d | 2019-05-15 | 2019-05-15 | 43 |  |  | 项目经理 | 8h | ¥400.00 | ¥400.00 |
| 67 | 3.4.3 | 干系人沟通 | manual | 1d | 2019-05-16 | 2019-05-16 | 43 |  |  | 项目经理 | 8h | ¥400.00 | ¥400.00 |
| 68 | 3.5 | **团队建设** |  | 3d | 2019-05-17 | 2019-05-21 |  |  |  |  | 264h | ¥12,360.00 | ¥12,360.00 |
| 69 | 3.5.1 | 培训 | manual | 1d | 2019-05-17 | 2019-05-17 | 43 |  |  | UI专家; 测试员1; 测试员2; 产品经理; 程序员1; 程序员2; 程序员3; 设计专家; 项目经理; 需求专家; 质量专家 | 88h | ¥5,120.00 | ¥5,120.00 |
| 70 | 3.5.2 | 娱乐活动 | manual | 1d | 2019-05-18 | 2019-05-18 | 43 |  |  | UI专家; 测试员1; 测试员2; 产品经理; 程序员1; 程序员2; 程序员3; 设计专家; 项目经理; 需求专家; 质量专家 | 88h | ¥4,120.00 | ¥4,120.00 |
| 71 | 3.5.3 | 沟通 | manual | 1d | 2019-05-19 | 2019-05-19 | 43 |  |  | UI专家; 测试员1; 测试员2; 产品经理; 程序员1; 程序员2; 程序员3; 设计专家; 项目经理; 需求专家; 质量专家 | 88h | ¥3,120.00 | ¥3,120.00 |
| 72 | 3.6 | 采购 |  | 20d | 2019-05-20 | 2019-06-14 | 43 | 0d | start no earlier than 2019-05-20 | 项目经理 | 160h | ¥8,000.00 | ¥8,000.00 |
| 73 | 3.7 | 项目验收 |  | 1d | 2019-05-16 | 2019-05-16 | 44 | 3d |  | UI专家; 测试员1; 测试员2; 产品经理; 程序员1; 程序员2; 程序员3; 设计专家; 项目经理; 需求专家; 质量专家 | 88h | ¥1,800.00 | ¥1,800.00 |
| 74 | 4 | **收尾** |  | 1d | 2019-05-22 | 2019-05-22 |  |  |  |  | 128h | ¥5,320.00 | ¥5,320.00 |
| 75 | 4.1 | 项目经验 | manual | 1d | 2019-05-22 | 2019-05-22 | 73 |  |  | UI专家; 设计专家; 需求专家; 质量专家 | 32h | ¥1,800.00 | ¥1,800.00 |
| 76 | 4.2 | 结束采购 | manual | 1d | 2019-05-22 | 2019-05-22 | 73 |  |  | 项目经理 | 8h | ¥400.00 | ¥400.00 |
| 77 | 4.3 | ¥3,120.00 | manual | 1d | 2019-05-22 | 2019-05-22 | 73 |  |  | UI专家; 测试员1; 测试员2; 产品经理; 程序员1; 程序员2; 程序员3; 设计专家; 项目经理; 需求专家; 质量专家 | 88h | ¥3,120.00 | ¥3,120.00 |
