# 教学辅助系统

Schedule from MS Project, 2019-02-07 to 2019-06-25, costs in ¥, A marks actual dates.

## Calendars

- 标准: Mon-Fri 08:00-12:00, 13:00-17:00; Sat-Sun off. Exceptions (off unless hours are given): 2019-05-01 (五一假期).

## Resources

| Resource | Rate |
| --- | --- |
| 项目经理 | 50 |
| 产品经理 | 45 |
| UI设计师 | 40 |
| 软件架构师 | 45 |
| 项目发起人 |  |
| 测试团队 | 30 |
| 开发团队 | 40 |
| 需求专家 | 45 |
| 团队建设费 |  |
| 测试团队 |  |
| 间接成本 |  |

## Schedule

| ID | WBS | Task | Type | Duration | Start | Finish | Predecessors | Complete | Remaining | Total slack | Free slack | Resources | Work | Actual work | Cost | Actual cost |
| --- | --- | --- | --- | --- | --- | --- | --- | --- | --- | --- | --- | --- | --- | --- | --- | --- |
| 1 | 1 | **启动** |  | 12d | 2019-03-18 A | 2019-04-02 |  | 87% | 1.57d | 59d |  |  | 136h | 122.4h | 5,760 | 5,080 |
| 2 | 1.1 | 任命项目经理 | manual | 1d | 2019-03-18 A | 2019-03-18 A |  | 100% |  |  |  | 项目发起人 | 8h | 8h |  |  |
| 3 | 1.2 | 组建核心团队 | manual | 1d | 2019-03-19 A | 2019-03-19 A | 2 | 100% |  |  |  | 项目经理; UI设计师 | 16h | 16h | 720 | 720 |
| 4 | 1.3 | 关系人分析 | manual | 2d | 2019-03-20 A | 2019-03-21 | 3 | 75% | 0.5d |  |  | 项目经理 | 16h | 12h | 800 | 600 |
| 5 | 1.4 | 制订章程 |  | 5d | 2019-03-22 A | 2019-03-28 A | 4, 6 | 100% |  |  |  | 项目经理 | 40h | 40h | 2,000 | 2,000 |
| 6 | 1.5 | 确定项目发起人 | manual | 1d | 2019-03-18 A | 2019-03-18 A |  | 100% |  |  |  |  |  |  |  |  |
| 7 | 1.6 | 制定里程碑进度计划 |  | 2d | 2019-03-29 A | 2019-04-01 | 5 | 40% | 1.2d | 60d |  | 项目经理 | 16h | 6.4h | 800 | 320 |
| 8 | 1.7 | 项目启动大会 |  | 1d | 2019-04-02 A | 2019-04-02 A | 7 | 100% |  |  |  | UI设计师; 产品经理; 软件架构师; 项目发起人; 项目经理 | 40h | 40h | 1,440 | 1,440 |
| 9 | 2 | **规划** |  | 33d? | 2019-03-18 A | 2019-05-02 |  | 51% | 16.11d? | 0d |  |  | 464h | 256h | 19,800 | 11,102 |
| 10 | 2.1 | **规划范围** |  | 10d? | 2019-04-03 A | 2019-04-16 |  | 78% | 2.25d? | 0.25d |  |  | 192h | 136.8h | 8,080 | 5,740 |
| 11 | 2.1.1 | 制定需求说明书 |  | 2d | 2019-04-04 A | 2019-04-05 A | 14 | 100% |  |  |  | 产品经理; 项目经理 | 32h | 32h | 1,520 | 1,520 |
| 12 | 2.1.2 | 界面设计 |  | 2d | 2019-04-08 A | 2019-04-09 A | 11 | 100% |  |  |  | UI设计师; 项目经理 | 32h | 32h | 1,440 | 1,440 |
| 13 | 2.1.3 | 详细设计说明书 |  | 3d | 2019-04-10 A | 2019-04-12 | 12 | 50% | 1.5d | 0.7d | 0d | UI设计师; 产品经理; 软件架构师; 项目经理 | 96h | 48h | 4,320 | 2,160 |
| 14 | 2.1.4 | 范围说明书 |  | 1d | 2019-04-03 A | 2019-04-03 A | 8 | 100% |  |  |  | 项目发起人; 项目经理 | 16h | 16h | 400 | 400 |
| 15 | 2.1.5 | 创建WBS |  | 1d? | 2019-04-15 A | 2019-04-15 | 13 | 70% | 0.3d? | 0.55d | 0d |  |  |  |  |  |
| 16 | 2.1.6 | 形成范围基准 |  | 1d | 2019-04-16 A | 2019-04-16 | 15 | 55% | 0.45d | 0.25d | 0d | 项目发起人; 项目经理 | 16h | 8.8h | 400 | 220 |
| 17 | 2.2 | **规划时间** |  | 4d | 2019-04-17 A | 2019-04-22 |  | 77% | 0.92d | 0.4d |  |  | 88h | 70.8h | 4,160 | 3,340 |
| 18 | 2.2.1 | 排列工作包顺序 |  | 2d | 2019-04-17 A | 2019-04-18 A | 16 | 100% |  |  |  | 软件架构师; 项目经理 | 32h | 32h | 1,520 | 1,520 |
| 19 | 2.2.2 | 估算资源 |  | 1d | 2019-04-19 A | 2019-04-19 | 18 | 75% | 0.25d | 0.35d | 0d | 产品经理; 软件架构师; 项目经理 | 24h | 18h | 1,120 | 840 |
| 20 | 2.2.3 | 估算持续时间 |  | 1d | 2019-04-19 A | 2019-04-19 | 18 | 75% | 0.25d | 0.35d | 0d | 产品经理; 软件架构师; 项目经理 | 24h | 18h | 1,120 | 840 |
| 21 | 2.2.4 | 制定进度计划 |  | 1d | 2019-04-22 A | 2019-04-22 | 19, 20 | 35% | 0.65d | 0.4d | 0d | 项目经理 | 8h | 2.8h | 400 | 140 |
| 22 | 2.3 | **规划成本** |  | 2d | 2019-04-23 A | 2019-04-24 |  | 20% | 1.6d | 1d |  |  | 32h | 6.4h | 800 | 160 |
| 23 | 2.3.1 | 项目成本估算 |  | 1d | 2019-04-23 A | 2019-04-23 | 21 | 40% | 0.6d | 1d | 0d | 项目发起人; 项目经理 | 16h | 6.4h | 400 | 160 |
| 24 | 2.3.2 | 项目预算 |  | 1d | 2019-04-24 | 2019-04-24 | 23 |  |  | 1d |  | 项目发起人; 项目经理 | 16h |  | 400 |  |

| ID | WBS | Task | Type | Duration | Start | Finish | Predecessors | Complete | Remaining | Actual start | Total slack | Free slack | Resources | Work | Actual work | Cost | Actual cost |
| --- | --- | --- | --- | --- | --- | --- | --- | --- | --- | --- | --- | --- | --- | --- | --- | --- | --- |
| 25 | 2.4 | **规划质量** |  | 2d | 2019-04-24 A | 2019-04-25 |  | 95% | 0.1d |  | 0d |  |  | 24h | 23.2h | 1,000 | 976 |
| 26 | 2.4.1 | 制定测试计划 |  | 1d | 2019-04-24 A | 2019-04-24 A | 23 | 100% |  |  |  |  | 软件架构师; 项目经理 | 16h | 16h | 760 | 760 |
| 27 | 2.4.2 | 制定测试用例 |  | 1d | 2019-04-25 A | 2019-04-25 | 26 | 90% | 0.1d |  | 0d |  | 测试团队 | 8h | 7.2h | 240 | 216 |
| 28 | 2.5 | **规划人力资源** |  | 2d | 2019-04-17 A | 2019-04-18 |  | 60% | 0.8d |  | 5d |  |  | 32h | 12.8h | 1,480 | 616 |
| 29 | 2.5.1 | 制定人力资源计划 |  | 1d | 2019-04-17 A | 2019-04-17 A | 16 | 100% |  |  |  |  | 项目经理 | 8h | 8h | 400 | 400 |
| 30 | 2.5.2 | 制定人员配备管理计划 |  | 1d | 2019-04-18 A | 2019-04-18 | 29 | 20% | 0.8d |  | 5d |  | 开发团队; 软件架构师; 项目经理 | 24h | 4.8h | 1,080 | 216 |
| 31 | 2.6 | **规划沟通** |  | 1d | 2019-04-17 A | 2019-04-17 |  | 25% | 0.75d |  | 6d |  |  | 24h | 6h | 1,080 | 270 |
| 32 | 2.6.1 | 制定沟通管理计划 |  | 1d | 2019-04-17 A | 2019-04-17 | 16 | 25% | 0.75d |  | 6d |  | 项目经理; 开发团队; 软件架构师 | 24h | 6h | 1,080 | 270 |
| 33 | 2.7 | **规划风险** |  | 24d | 2019-03-18 | 2019-04-18 |  |  |  |  | 0d |  |  | 40h |  | 1,600 |  |
| 34 | 2.7.1 | 识别风险 | manual | 1d | 2019-03-18 | 2019-03-18 |  |  |  |  |  |  | 项目发起人; 项目经理 | 16h |  | 400 |  |
| 35 | 2.7.2 | 风险分析 | manual | 1d | 2019-03-19 | 2019-03-19 | 34 |  |  |  |  |  | 项目经理 | 8h |  | 400 |  |
| 36 | 2.7.3 | 制定风险登记册 |  | 2d | 2019-04-17 | 2019-04-18 | 16, 35 |  |  |  | 5d |  | 项目经理 | 16h |  | 800 |  |
| 37 | 2.8 | 规划整合 |  | 4d | 2019-04-26 | 2019-05-02 | 32, 36, 21, 24, 27, 30 |  |  |  | 0d |  | 项目经理 | 32h |  | 1,600 |  |
| 38 | 3 | **执行与监控** |  | 1d | 2019-05-03 A | 2019-05-03 | 37 | 40% | 0.6d |  | 0d |  | 项目经理 | 24h | 9.6h | 1,160 | 464 |
| 39 | 3.1 | 组建项目团队 |  | 1d | 2019-05-03 A | 2019-05-03 | 37 | 40% | 0.6d |  | -34d | 0d | 软件架构师; 项目经理 | 16h | 6.4h | 760 | 304 |
| 40 | 4 | **项目执行** |  | 4d | 2019-04-17 | 2019-04-20 A | 39 | 100% |  | 2019-02-07 |  |  | UI设计师; 产品经理; 开发团队; 软件架构师; 项目发起人; 项目经理 | 720h | 720h | 28,160 | 28,160 |
| 41 | 4.1 | **学生CS模块** |  | 35d | 2019-02-07 A | 2019-03-27 A |  | 100% |  |  |  |  |  | 224h | 224h | 8,960 | 8,960 |
| 42 | 4.1.1 | 登录修改密码 | manual | 1d | 2019-03-18 A | 2019-03-18 A |  | 100% |  |  |  |  | 开发团队 | 8h | 8h | 320 | 320 |
| 43 | 4.1.2 | 资源共享 | manual | 2d | 2019-03-20 A | 2019-03-21 A |  | 100% |  |  |  |  | 开发团队 | 16h | 16h | 640 | 640 |
| 44 | 4.1.3 | 签到 | manual | 7d | 2019-03-18 A | 2019-03-26 A |  | 100% |  |  |  |  | 开发团队 | 56h | 56h | 2,240 | 2,240 |
| 45 | 4.1.4 | 录屏 | manual | 14d | 2019-02-16 A | 2019-03-06 A |  | 100% |  |  |  |  |  |  |  |  |  |
| 46 | 4.1.5 | 签到排名 | manual | 1d | 2019-03-27 A | 2019-03-27 A | 44 | 100% |  |  |  |  |  |  |  |  |  |
| 47 | 4.1.6 | 课堂小测 | manual | 3d | 2019-02-28 A | 2019-03-04 A |  | 100% |  |  |  |  |  |  |  |  |  |
| 48 | 4.1.7 | 成绩分析和预测 | manual | 4d | 2019-03-05 A | 2019-03-08 A | 47 | 100% |  |  |  |  |  |  |  |  |  |
| 49 | 4.1.8 | 共享屏幕 | manual | 18d | 2019-02-07 A | 2019-03-04 A |  | 100% |  |  |  |  | 开发团队 | 144h | 144h | 5,760 | 5,760 |

| ID | WBS | Task | Type | Duration | Start | Finish | Predecessors | Complete | Remaining | Resources | Work | Actual work | Cost | Actual cost |
| --- | --- | --- | --- | --- | --- | --- | --- | --- | --- | --- | --- | --- | --- | --- |
| 50 | 4.2 | **老师CS模块** |  | 36d | 2019-02-07 A | 2019-03-28 A |  | 100% |  |  | 232h | 232h | 9,280 | 9,280 |
| 51 | 4.2.1 | 登录修改密码 | manual | 1d | 2019-03-18 A | 2019-03-18 A |  | 100% |  | 开发团队 | 8h | 8h | 320 | 320 |
| 52 | 4.2.2 | 资源共享 | manual | 2d | 2019-03-20 A | 2019-03-21 A |  | 100% |  | 开发团队 | 16h | 16h | 640 | 640 |
| 53 | 4.2.3 | 查看签到记录 | manual | 2d | 2019-03-27 A | 2019-03-28 A | 44 | 100% |  | 开发团队 | 16h | 16h | 640 | 640 |
| 54 | 4.2.4 | 共享屏幕 | manual | 20d | 2019-02-07 A | 2019-03-06 A |  | 100% |  | 开发团队 | 160h | 160h | 6,400 | 6,400 |
| 55 | 4.2.5 | 随机点名 | manual | 1d | 2019-03-07 A | 2019-03-07 A |  | 100% |  | 开发团队 | 8h | 8h | 320 | 320 |
| 56 | 4.2.6 | 学生演示 | manual | 6d | 2019-02-07 A | 2019-02-14 A |  | 100% |  |  |  |  |  |  |
| 57 | 4.2.7 | 查看小测 | manual | 3d | 2019-03-20 A | 2019-03-22 A | 59 | 100% |  |  |  |  |  |  |
| 58 | 4.2.8 | 课堂反馈 | manual | 2d | 2019-03-22 A | 2019-03-25 A |  | 100% |  |  |  |  |  |  |
| 59 | 4.2.9 | 上传小测 | manual | 3d | 2019-03-16 A | 2019-03-19 A |  | 100% |  | 开发团队 | 24h | 24h | 960 | 960 |
| 60 | 4.3 | **学生BS模块** |  | 11d | 2019-04-04 A | 2019-04-18 A |  | 100% |  |  | 32h | 32h | 1,280 | 1,280 |
| 61 | 4.3.1 | 登录修改密码 | manual | 1d | 2019-04-04 A | 2019-04-04 A |  | 100% |  | 开发团队 | 8h | 8h | 320 | 320 |
| 62 | 4.3.2 | 上传请假条 | manual | 2d | 2019-04-15 A | 2019-04-17 A |  | 100% |  | 开发团队 | 16h | 16h | 640 | 640 |
| 63 | 4.3.3 | 查看请假记录 | manual | 1d | 2019-04-18 A | 2019-04-18 A | 62 | 100% |  | 开发团队 | 8h | 8h | 320 | 320 |
| 64 | 4.4 | **老师BS模块** |  | 11d | 2019-04-04 A | 2019-04-18 A |  | 100% |  |  | 40h | 40h | 1,600 | 1,600 |
| 65 | 4.4.1 | 登录修改密码 | manual | 1d | 2019-04-04 A | 2019-04-04 A |  | 100% |  | 开发团队 | 8h | 8h | 320 | 320 |
| 66 | 4.4.2 | 审核请假条 | manual | 1d | 2019-04-18 A | 2019-04-18 A | 62 | 100% |  | 开发团队 | 8h | 8h | 320 | 320 |
| 67 | 4.4.3 | 请假记录查看 | manual | 1d | 2019-04-18 A | 2019-04-18 A | 62 | 100% |  | 开发团队 | 8h | 8h | 320 | 320 |
| 68 | 4.4.4 | 创建班级 | manual | 2d | 2019-04-11 A | 2019-04-12 A |  | 100% |  | 开发团队 | 16h | 16h | 640 | 640 |
| 69 | 5 | **项目监控** |  | 64d | 2019-03-18 A | 2019-06-14 | 38 | 75% | 16d | 项目经理 | 736h | 426h | 34,440 | 19,675 |
| 70 | 5.1 | 各项指标监控 | manual | 1d | 2019-05-03 A | 2019-05-03 |  | 13% | 0.88d | UI设计师; 测试团队; 产品经理; 开发团队; 软件架构师; 项目经理; 需求专家 | 56h | 7h | 2,360 | 295 |
| 71 | 5.2 | 监控评审 | manual | 1d | 2019-05-03 A | 2019-05-03 |  | 13% | 0.88d | 项目发起人; 项目经理 | 16h | 2h | 400 | 50 |
| 72 | 5.3 | 变更评审 | manual | 1d | 2019-03-18 A | 2019-03-18 A |  | 100% |  | 软件架构师; 项目经理; 需求专家 | 24h | 24h | 1,120 | 1,120 |
| 73 | 5.4 | 例会 | manual | 4d | 2019-03-18 A | 2019-03-21 A |  | 100% |  | UI设计师; 测试团队; 开发团队; 软件架构师 | 128h | 128h | 4,960 | 4,960 |

| ID | WBS | Task | Type | Duration | Start | Finish | Predecessors | Complete | Remaining | Total slack | Resources | Work | Actual work | Cost | Actual cost |
| --- | --- | --- | --- | --- | --- | --- | --- | --- | --- | --- | --- | --- | --- | --- | --- |
| 74 | 6 | **管理关系人** |  | 2d | 2019-05-03 A | 2019-05-07 | 38 | 50% | 1d | 0d |  | 112h | 56h | 4,400 | 2,200 |
| 75 | 6.1 | 发布项目信息 | manual | 2d | 2019-05-03 A | 2019-05-07 |  | 50% | 1d |  | 项目经理 | 16h | 8h | 800 | 400 |
| 76 | 6.2 | 报告监控指标 | manual | 2d | 2019-05-03 A | 2019-05-07 |  | 50% | 1d |  | UI设计师; 产品经理; 软件架构师; 需求专家 | 64h | 32h | 2,800 | 1,400 |
| 77 | 6.3 | 关系人沟通 | manual | 2d | 2019-05-03 A | 2019-05-07 |  | 50% | 1d |  | 项目发起人; 项目经理 | 32h | 16h | 800 | 400 |
| 78 | 7 | **团队建设** |  | 2d | 2019-03-18 A | 2019-03-19 |  | 15% | 1.7d | 0d |  | 144h | 21.6h | 6,080 | 912 |
| 79 | 7.1 | 娱乐活动 | manual | 2d | 2019-03-18 A | 2019-03-19 |  | 15% | 1.7d |  | UI设计师; 测试团队; 开发团队; 软件架构师 | 64h | 9.6h | 2,480 | 372 |
| 80 | 7.2 | 沟通 | manual | 2d | 2019-03-18 A | 2019-03-19 |  | 15% | 1.7d |  | UI设计师; 产品经理; 软件架构师; 项目经理; 需求专家 | 80h | 12h | 3,600 | 540 |
| 81 | 8 | **收尾** |  | 7d | 2019-06-17 A | 2019-06-25 A |  | 100% |  |  |  | 224h | 224h | 8,680 | 8,680 |
| 82 | 8.1 | 项目内部收尾 |  | 7d | 2019-06-17 A | 2019-06-25 A | 69 | 100% |  |  | UI设计师; 测试团队; 开发团队; 软件架构师 | 224h | 224h | 8,680 | 8,680 |
| 83 | 8.2 | 项目展示 | manual | 1d | 2019-06-18 A | 2019-06-18 A |  | 100% |  |  |  |  |  |  |  |
